# TaskPlan - ISO Datatype - Option C

Schedule from MS Project, 2010-02-18 to 2010-05-21, A marks actual dates.
NIH/NCI

## Calendars

- Standard: Mon-Fri 08:00-12:00, 13:00-17:00; Sat-Sun off.

## Resources

| Resource |
| --- |
| SDK |
| caGrid |
| caAdapter |
| QA |

## Schedule

| ID | WBS | Task | Type | Duration | Start | Finish | Predecessors | Complete | Remaining | Total slack | Free slack | Constraint | Resources | Work | Actual work |
| --- | --- | --- | --- | --- | --- | --- | --- | --- | --- | --- | --- | --- | --- | --- | --- |
| 1 | 1 | **ISO Datatype support** |  | 67d? | 2010-02-18 A | 2010-05-21 |  | 42% | 39.07d? | 0d |  |  |  | 3540h | 1248.8h |
| 2 | 1.1 | Kickoff |  | 1d | 2010-03-01 | 2010-03-01 |  |  |  | 54d |  | start no earlier than 2010-03-01 |  |  |  |
| 4 | 1.2 | **Implementation** |  | 63d? | 2010-02-18 A | 2010-05-17 |  | 48% | 32.45d? | 4d |  |  |  | 2644h | 1248.8h |
| 5 | 1.2.1 | **ISO 21090 Library** |  | 20d | 2010-03-02 A | 2010-03-29 |  | 75% | 5d | 4d |  |  |  | 480h | 360h |
| 6 | 1.2.1.1 | Analyze COPPA Localized library |  | 5d | 2010-03-02 A | 2010-03-08 A | 2 | 100% |  |  |  |  | SDK; caGrid | 80h | 80h |
| 7 | 1.2.1.2 | Analyze COPPA serialization framework |  | 5d | 2010-03-02 A | 2010-03-08 A | 2 | 100% |  |  |  |  | SDK; caGrid | 80h | 80h |
| 8 | 1.2.1.3 | Analyze COPPA OR Mapping framework |  | 5d | 2010-03-02 A | 2010-03-08 A | 2 | 100% |  |  |  |  | SDK; caGrid | 80h | 80h |
| 9 | 1.2.1.4 | Implement enhancements in datatype library |  | 15d | 2010-03-09 A | 2010-03-29 | 8 | 50% | 7.5d | 4d | 0d |  | SDK; caGrid | 240h | 120h |
| 10 | 1.2.1.5 | Baseline library code | milestone | 0d | 2010-03-29 | 2010-03-29 | 9 |  |  | 1d | 0d |  |  |  |  |
| 12 | 1.2.2 | **SDK Enhancements** |  | 48d | 2010-02-18 A | 2010-04-26 |  | 58% | 20.03d | 19d |  |  |  | 1064h | 620h |
| 13 | 1.2.2.1 | Document short term and long term goals for the SDK |  | 10d | 2010-02-18 A | 2010-03-03 A |  | 100% |  |  |  |  | SDK | 80h | 80h |
| 14 | 1.2.2.2 | Create design document for tag value specification |  | 10d | 2010-03-09 A | 2010-03-22 A | 8 | 100% |  |  |  |  | SDK | 80h | 80h |
| 15 | 1.2.2.3 | Create design document for Hibernate mapping |  | 15d | 2010-03-09 A | 2010-03-29 | 8 | 90% | 1.5d | 32.5d | 0d |  | SDK | 120h | 108h |
| 16 | 1.2.2.4 | Develop JAXB based serialization framework |  | 15d | 2010-03-09 A | 2010-03-29 A | 8 | 100% |  |  |  |  | SDK | 120h | 120h |
| 17 | 1.2.2.5 | Create Test UML model |  | 5d | 2010-03-23 A | 2010-03-29 | 14 | 80% | 1d | 37.5d |  |  | SDK | 40h | 32h |
| 18 | 1.2.2.6 | Enhance SDK Java code generator for the ISO data types |  | 5d | 2010-03-23 A | 2010-03-29 | 15FS-5d | 80% | 1d | 37.5d |  |  | SDK | 40h | 32h |
| 19 | 1.2.2.7 | Enhance SDK ORM module for ISO data types |  | 10d | 2010-03-23 A | 2010-04-05 | 15FS-5d | 80% | 2d | 34d |  |  | SDK | 80h | 64h |
| 20 | 1.2.2.8 | Enhance SDK service layer to support ISO data types |  | 15d | 2010-03-09 A | 2010-03-29 | 6 | 60% | 6d | 0d |  |  | SDK | 120h | 72h |
| 21 | 1.2.2.9 | Integrate ISO 21090 library in JAXB serialization |  | 8d | 2010-03-30 A | 2010-04-08 | 20, 16 | 50% | 4d | 26d | 0d |  | SDK | 64h | 32h |
| 22 | 1.2.2.10 | Enhance SDK proxy framework for ISO data types |  | 5d | 2010-04-09 | 2010-04-15 | 21 |  |  | 21d |  |  | SDK | 40h |  |
| 23 | 1.2.2.11 | Enhance SDK RESTful query translator for ISO data types |  | 15d | 2010-03-30 | 2010-04-19 | 20 |  |  | 29d |  |  | SDK | 120h |  |
| 24 | 1.2.2.12 | Enhance BDA scripts for packaging and deployment |  | 15d | 2010-03-30 | 2010-04-19 | 6, 20 |  |  | 0d |  |  | SDK | 120h |  |
| 25 | 1.2.2.13 | Unit test and defect fix |  | 5d | 2010-04-20 | 2010-04-26 | 24 |  |  | 0d |  |  | SDK | 40h |  |
| 28 | 1.2.3 | **caAdapter Enhancements** |  | 43d | 2010-02-18 A | 2010-04-19 |  | 43% | 24.73d | 24d |  |  |  | 320h | 136h |
| 29 | 1.2.3.1 | Document the short and long term scope of the caAdapter efforts |  | 5d | 2010-03-02 A | 2010-03-08 A | 2 | 100% |  |  |  |  | caAdapter | 40h | 40h |
| 30 | 1.2.3.2 | Enhance caAdapter to load ISO 21090 information |  | 10d | 2010-03-09 A | 2010-03-22 | 29 | 80% | 2d | 42.5d |  |  | caAdapter | 80h | 64h |
| 31 | 1.2.3.3 | Create template model |  | 5d | 2010-03-16 A | 2010-03-22 | 29 | 80% | 1d | 22.5d | 0d |  | caAdapter | 40h | 32h |
| 32 | 1.2.3.4 | Enhance caAdapter Model Mapping Service |  | 15d | 2010-03-23 | 2010-04-12 | 31 |  |  | 22.5d | 0d |  | caAdapter | 120h |  |
| 33 | 1.2.3.5 | Unit test and defect fix |  | 5d | 2010-04-13 | 2010-04-19 | 32 |  |  | 22.5d | 0d |  | caAdapter | 40h |  |
| 34 | 1.2.3.6 | Deliver baseline caAdapter | milestone | 0d | 2010-02-18 | 2010-02-18 |  |  |  | 62d |  |  |  |  |  |

| ID | WBS | Task | Type | Duration | Start | Finish | Predecessors | Complete | Remaining | Total slack | Free slack | Resources | Work | Actual work |
| --- | --- | --- | --- | --- | --- | --- | --- | --- | --- | --- | --- | --- | --- | --- |
| 36 | 1.2.4 | **caGrid Enhancements** |  | 37d? | 2010-03-02 A | 2010-04-21 |  | 35% | 24.07d? | 22d |  |  | 380h | 132.8h |
| 37 | 1.2.4.1 | Document the short and long term scope of the caGrid efforts |  | 5d | 2010-03-02 A | 2010-03-08 A | 2 | 100% |  |  |  | caGrid | 40h | 40h |
| 38 | 1.2.4.2 | Create design document for ISO Introduce Extension |  | 4d | 2010-03-09 A | 2010-03-12 | 37 | 80% | 0.8d | 44.9d | 0d | caGrid | 32h | 25.6h |
| 39 | 1.2.4.3 | Create Introduce data types extension for adding ISODatatypes to a service |  | 5d | 2010-03-15 A | 2010-03-19 | 38 | 60% | 2d | 41.9d | 0d | caGrid | 40h | 24h |
| 40 | 1.2.4.4 | Create Service Development Process Documentation for ISO datatypes |  | 2d | 2010-03-22 A | 2010-03-23 | 39 | 60% | 0.8d | 40.7d | 0d | caGrid | 16h | 9.6h |
| 41 | 1.2.4.5 | Develop UI component for Introduce data types extension for adding ISODatatypes to a service |  | 2d | 2010-03-24 A | 2010-03-25 | 40 | 60% | 0.8d | 39.5d |  | caGrid | 16h | 9.6h |
| 42 | 1.2.4.6 | Review SDK database/usertype approach |  | 2d | 2010-03-30 A | 2010-03-31 | 10 | 50% | 1d | 3d | 0d | caGrid | 16h | 8h |
| 43 | 1.2.4.7 | Design CQL to HQL general approach for SDK managed ISO datatypes |  | 10d | 2010-04-01 A | 2010-04-14 | 42 | 20% | 8d | 22d |  | caGrid | 80h | 16h |
| 44 | 1.2.4.8 | Prototype SDK/caGrid query exchange |  | 10d | 2010-04-01 | 2010-04-14 | 42 |  |  | 3d | 0d | caGrid | 80h |  |
| 45 | 1.2.4.9 | Make ISO client libraries available via download (e.g. any specialized data service client libraries, etc) |  | 0.5d | 2010-04-01 | 2010-04-01 | 42 |  |  | 6.5d | 0d | caGrid | 4h |  |
| 46 | 1.2.4.10 | Upload ISO datatype extension to Introduce Update Site |  | 0.5d | 2010-04-01 | 2010-04-01 | 45 |  |  | 6.5d | 0d | caGrid | 4h |  |
| 47 | 1.2.4.11 | Upload ISO datatype data service extension/style to Introduce Update Site |  | 0.5d | 2010-04-02 | 2010-04-02 | 46 |  |  | 6.5d | 0d | caGrid | 4h |  |
| 48 | 1.2.4.12 | Ivyify retrieval of dependency on common project |  | 1d | 2010-04-02 | 2010-04-05 | 47 |  |  | 29.5d |  | caGrid | 8h |  |
| 49 | 1.2.4.13 | Unit test and defect fix |  | 5d | 2010-04-15 | 2010-04-21 | 47, 44 |  |  | 3d | 0d | caGrid | 40h |  |
| 50 | 1.2.4.14 | Deliver baseline caGrid components | milestone | 0d | 2010-04-21 | 2010-04-21 | 49 |  |  | 3d |  | caGrid |  |  |
| 53 | 1.2.5 | **SDK/caGrid Integration** |  | 5d | 2010-04-27 | 2010-05-03 |  |  |  | 0d |  |  | 80h |  |
| 54 | 1.2.5.1 | Perform SDK and caGrid Integration |  | 5d | 2010-04-27 | 2010-05-03 | 25, 50 |  |  | 0d |  | SDK; caGrid | 80h |  |
| 57 | 1.2.6 | **QA Testing** |  | 20d | 2010-04-20 | 2010-05-17 |  |  |  | 0d |  |  | 320h |  |
| 58 | 1.2.6.1 | Prepare test plan |  | 10d | 2010-04-20 | 2010-05-03 | 54SS-5d |  |  | 0d |  | QA; SDK; caGrid | 240h |  |
| 59 | 1.2.6.2 | Execute test cases |  | 10d | 2010-05-04 | 2010-05-17 | 58, 54 |  |  | 0d |  | QA | 80h |  |
| 61 | 1.3 | **User Documentation** |  | 10d | 2010-05-04 | 2010-05-17 |  |  |  | 0d |  |  | 800h |  |
| 62 | 1.3.1 | Prepare user guide |  | 10d | 2010-05-04 | 2010-05-17 | 54 |  |  | 0d |  | SDK; caGrid; caAdapter | 240h |  |
| 63 | 1.3.2 | Prepare installation guide |  | 10d | 2010-05-04 | 2010-05-17 | 54 |  |  | 0d |  | SDK; caGrid; caAdapter | 240h |  |
| 64 | 1.3.3 | Deliver installation and user guide | milestone | 0d | 2010-05-17 | 2010-05-17 | 62, 63 |  |  | 0d |  |  |  |  |
| 65 | 1.3.4 | Prepare developers guide for service developers with ISO 21090 datatypes |  | 10d | 2010-05-04 | 2010-05-17 | 54 |  |  | 4d |  | SDK; caGrid; caAdapter | 240h |  |
| 66 | 1.3.5 | Develop developer guide documentation for data type extension |  | 10d | 2010-05-04 | 2010-05-17 | 54 |  |  | 4d |  | caGrid | 80h |  |

| ID | WBS | Task | Duration | Start | Finish | Predecessors | Total slack | Resources | Work |
| --- | --- | --- | --- | --- | --- | --- | --- | --- | --- |
| 68 | 1.4 | **Transition** | 4d | 2010-05-18 | 2010-05-21 |  | 0d |  | 96h |
| 69 | 1.4.1 | Prepare release notes, zope sites | 2d | 2010-05-18 | 2010-05-19 | 59, 64 | 0d | SDK; caGrid; caAdapter | 48h |
| 70 | 1.4.2 | Upload artifacts on the public sites | 2d | 2010-05-20 | 2010-05-21 | 69 | 0d | SDK; caGrid; caAdapter | 48h |
